# POC项目

Schedule from a web Gantt chart, 2024-09-25 to 2025-02-14.
Saturdays and Sundays are off

## Schedule

| ID | WBS | Task | Duration | Start | Finish | Predecessors | inPeople | Status |
| --- | --- | --- | --- | --- | --- | --- | --- | --- |
| 2 | 1 | 功能列表确认 | 8d | 2024-09-25 | 2024-10-04 |  | HMCT&Alpine&ArcSoft |  |
| 3 | 2 | 开发文档交付 | 18d | 2024-10-07 | 2024-10-30 | 2 | ArcSoft | waiting |
| 4 | 3 | 功能列表-UE确认 | 3d | 2024-10-10 | 2024-10-14 |  | 本田 |  |
| 5 | 4 | 功能列表-内部UI作成 | 5d | 2024-10-15 | 2024-10-21 | 4 |  | waiting |
| 6 | 5 | 开发环境提供 | 23d | 2024-09-25 | 2024-10-25 |  | 阿尔派 |  |
| 7 | 6 | 开发环境-MCU编译器及工具准备 | 10d | 2024-10-14 | 2024-10-25 |  | 阿尔派 |  |
| 8 | 7 | 开发环境-CAN接口、RPC调用、TASK注册相关开发资料提供 | 1d | 2024-10-14 | 2024-10-14 |  | 阿尔派 |  |
| 9 | 8 | 整车环境提供 | 23d | 2024-09-25 | 2024-10-25 |  | 虹宜 |  |
| 10 | 9 | 整车环境-AVM相机采购 | 6d | 2024-10-11 | 2024-10-18 |  | 虹软 |  |
| 11 | 10 | 整车环境-OMS相机采购 | 10d | 2024-10-14 | 2024-10-25 |  | 虹软 |  |
| 12 | 11 | 8255平台移植 | 15d | 2024-10-28 | 2024-11-15 | 6 | Alpine&ArcSoft | waiting |
| 13 | 12 | 感知算法调优 | 20d | 2024-11-18 | 2024-12-13 | 12 | ArcSoft | waiting |
| 14 | 13 | 台架联合调试 | 20d | 2024-11-18 | 2024-12-13 | 12 | Alpine&ArcSoft | waiting |
| 15 | 14 | 实车联合调试 | 13d | 2024-12-16 | 2025-01-01 | 14 | Alpine&ArcSoft | waiting |
| 16 | 15 | β版本交付 | 12d | 2025-01-02 | 2025-01-17 | 15 | ArcSoft | waiting |
| 17 | 16 | 实车效果调优 | 10d | 2025-01-20 | 2025-01-31 | 16 | ArcSoft | waiting |
| 18 | 17 | Final版本交付 | 5d | 2025-02-03 | 2025-02-07 | 17 | ArcSoft | waiting |
| 19 | 18 | 版本验收 | 5d | 2025-02-10 | 2025-02-14 | 18 | HMCT&Alpine&ArcSoft | waiting |

Notes:
- 2: 项目方确认的SOR/项目计划表
- 3: 方案设计说明、API文档、项目开发计划，接口沟通
- 6: 样件板、摄像头样件、摄像头取流工具和编译工具
- 9: 1辆目标实车（运至杭州，需要有临牌和商业保险）
- 12: 示例程序、α版SDK、测试报告（α版本用于集成调试）
- 13: 精度测试报告
- 14: 上车前的联调
- 15: 具备目标功能的实车
- 16: 功能说明文档、示例程序、β版SDK、测试报告
- 17: 目标功能优化的实车
- 18: 功能说明文档、示例程序、Final版SDK、测试报告
- 19: 验收报告
